# 新导入的项目

Schedule from Primavera P6, 2019-01-30 to 2019-06-30, data date 2014-01-20.
Must finish by 2014-01-20

## Calendars

- 7天8小时: Mon-Sun 08:00-15:59.

## Schedule

| ID | Activity | Type | Duration | Start | Finish |
| --- | --- | --- | --- | --- | --- |
| MXMQJD0101 | 项目启动 | resource dependent | 1d | 2019-01-30 | 2019-01-30 |
| MXMQJD0102 | 项目策划、外业准备 | resource dependent | 1d | 2019-02-10 | 2019-02-10 |
| MXMQJD0103 | 线路完成核定线 | resource dependent | 1d | 2019-03-10 | 2019-03-10 |
| MXMQJD0104 | 勘测定界成果文件 | resource dependent | 1d | 2019-03-15 | 2019-03-15 |
| MXMQJD0105 | 除外工作提交成果资料、完成勘察测量外业工作 | resource dependent | 1d | 2019-04-01 | 2019-04-01 |
| MXMQJD0106 | 完成全部勘察测量工作并提交成果文件 | resource dependent | 1d | 2019-04-15 | 2019-04-15 |
| MXMQJD0107 | 提交线路施工招标版施工图设计、工程量清单、施工图预算（含阀室、1000米以下穿越） | resource dependent | 1d | 2019-04-30 | 2019-04-30 |
| MXMQJD0108 | 完成0版线路施工施工图设计和预算 | resource dependent | 1d | 2019-05-15 | 2019-05-15 |
| MXMQJD0109 | 提交大于1000米定向钻施工0版施工图设计、工程量清单、施工图预算 | resource dependent | 1d | 2019-06-15 | 2019-06-15 |
| MXMQJD0110 | 提交站场、调控中心0版施工图设计、工程量清单、施工图预算 | resource dependent | 1d | 2019-06-30 | 2019-06-30 |
| MXMQJD0201PL01 | 一期工程干线选定线工作 | resource dependent | 77d | 2019-02-28 | 2019-05-15 |
| MXMQJD0202PL01 | 廊坊分输支线选定线工作 | resource dependent | 77d | 2019-02-28 | 2019-05-15 |
| MXMQJD0203PL01 | 天津LNG联络线选定线工作 | resource dependent | 77d | 2019-02-28 | 2019-05-15 |
| MXMQJD0301PL001SV01 | 定兴县线路段成果表 | resource dependent | 55d | 2019-02-20 | 2019-04-15 |
| MXMQJD0301PL001SV02 | 定兴县线路段带状地形图 | resource dependent | 55d | 2019-02-20 | 2019-04-15 |
| MXMQJD0301PL001SV03 | 定兴县线路段地下管线探测技术设计书 | resource dependent | 55d | 2019-02-20 | 2019-04-15 |
| MXMQJD0301PL001SV04 | 定兴县线路段地下管线探测报告书 | resource dependent | 55d | 2019-02-20 | 2019-04-15 |
| MXMQJD0301PL001SV05 | 定兴县线路段管线数据成果报告 | resource dependent | 55d | 2019-02-20 | 2019-04-15 |
| MXMQJD0301PL001SV06 | 高碑店市线路段成果表 | resource dependent | 55d | 2019-02-20 | 2019-04-15 |
| MXMQJD0301PL001SV07 | 高碑店市线路段带状地形图 | resource dependent | 55d | 2019-02-20 | 2019-04-15 |
| MXMQJD0301PL001SV08 | 高碑店市线路段地下管线探测技术设计书 | resource dependent | 55d | 2019-02-20 | 2019-04-15 |
| MXMQJD0301PL001SV09 | 高碑店市线路段地下管线探测报告书 | resource dependent | 55d | 2019-02-20 | 2019-04-15 |
| MXMQJD0301PL001SV10 | 高碑店市线路段管线数据成果报告 | resource dependent | 55d | 2019-02-20 | 2019-04-15 |
| MXMQJD0301PL001SV11 | 霸州市线路段成果表 | resource dependent | 55d | 2019-02-20 | 2019-04-15 |
| MXMQJD0301PL001SV12 | 霸州市线路段带状地形图 | resource dependent | 55d | 2019-02-20 | 2019-04-15 |
| MXMQJD0301PL001SV13 | 霸州市线路段地下管线探测技术设计书 | resource dependent | 55d | 2019-02-20 | 2019-04-15 |
| MXMQJD0301PL001SV14 | 霸州市线路段地下管线探测报告书 | resource dependent | 55d | 2019-02-20 | 2019-04-15 |
| MXMQJD0301PL001SV15 | 霸州市线路段管线数据成果报告 | resource dependent | 55d | 2019-02-20 | 2019-04-15 |
| MXMQJD0301PL001SV16 | 固安县线路段成果表 | resource dependent | 55d | 2019-02-20 | 2019-04-15 |
| MXMQJD0301PL001SV17 | 固安县线路段带状地形图 | resource dependent | 55d | 2019-02-20 | 2019-04-15 |
| MXMQJD0301PL001SV18 | 固安县线路段地下管线探测技术设计书 | resource dependent | 55d | 2019-02-20 | 2019-04-15 |
| MXMQJD0301PL001SV19 | 固安县线路段地下管线探测报告书 | resource dependent | 55d | 2019-02-20 | 2019-04-15 |
| MXMQJD0301PL001SV20 | 固安县线路段管线数据成果报告 | resource dependent | 55d | 2019-02-20 | 2019-04-15 |
| MXMQJD0301PL001SV21 | 静海区线路段成果表 | resource dependent | 55d | 2019-02-20 | 2019-04-15 |
| MXMQJD0301PL001SV22 | 静海区线路段带状地形图 | resource dependent | 55d | 2019-02-20 | 2019-04-15 |
| MXMQJD0301PL001SV23 | 滨海新区线路段成果表 | resource dependent | 55d | 2019-02-20 | 2019-04-15 |
| MXMQJD0301PL001SV24 | 滨海新区线路段带状地形图 | resource dependent | 55d | 2019-02-20 | 2019-04-15 |
| MXMQJD0301PL001SV25 | 黄骅市线路段成果表 | resource dependent | 55d | 2019-02-20 | 2019-04-15 |
| MXMQJD0301PL001SV26 | 黄骅市线路段带状地形图 | resource dependent | 55d | 2019-02-20 | 2019-04-15 |
| MXMQJD0301PL001SV27 | 黄骅市线路段地下管线探测技术设计书 | resource dependent | 55d | 2019-02-20 | 2019-04-15 |
| MXMQJD0301PL001SV28 | 黄骅市线路段地下管线探测报告书 | resource dependent | 55d | 2019-02-20 | 2019-04-15 |
| MXMQJD0301PL001SV29 | 黄骅市线路段管线数据成果报告 | resource dependent | 55d | 2019-02-20 | 2019-04-15 |
| MXMQJD0301PL001SV30 | 荣乌高速1#穿越地形图 | resource dependent | 55d | 2019-02-20 | 2019-04-15 |
| MXMQJD0301PL001SV31 | 荣乌高速1#穿越纵断面图 | resource dependent | 55d | 2019-02-20 | 2019-04-15 |
| MXMQJD0301PL001SV32 | G112国道1#穿越地形图 | resource dependent | 55d | 2019-02-20 | 2019-04-15 |
| MXMQJD0301PL001SV33 | G112国道1#穿越纵断面图 | resource dependent | 55d | 2019-02-20 | 2019-04-15 |
| MXMQJD0301PL001SV34 | 京白连接线穿越地形图 | resource dependent | 55d | 2019-02-20 | 2019-04-15 |
| MXMQJD0301PL001SV35 | 京白连接线穿越纵断面图 | resource dependent | 55d | 2019-02-20 | 2019-04-15 |
| MXMQJD0301PL001SV36 | 京雄高速穿越地形图 | resource dependent | 55d | 2019-02-20 | 2019-04-15 |
| MXMQJD0301PL001SV37 | 京雄高速穿越纵断面图 | resource dependent | 55d | 2019-02-20 | 2019-04-15 |
| MXMQJD0301PL001SV38 | G112国道2#穿越地形图 | resource dependent | 55d | 2019-02-20 | 2019-04-15 |
| MXMQJD0301PL001SV39 | G112国道2#穿越地形图 | resource dependent | 55d | 2019-02-20 | 2019-04-15 |
| MXMQJD0301PL001SV40 | 荣乌高速2#穿越纵断面图 | resource dependent | 55d | 2019-02-20 | 2019-04-15 |
| MXMQJD0301PL001SV41 | 荣乌高速2#穿越地形图 | resource dependent | 55d | 2019-02-20 | 2019-04-15 |
| MXMQJD0301PL001SV42 | G112国道3#穿越纵断面图 | resource dependent | 55d | 2019-02-20 | 2019-04-15 |
| MXMQJD0301PL001SV43 | G112国道3#穿越地形图 | resource dependent | 55d | 2019-02-20 | 2019-04-15 |
| MXMQJD0301PL001SV44 | G112国道4#穿越纵断面图 | resource dependent | 55d | 2019-02-20 | 2019-04-15 |
| MXMQJD0301PL001SV45 | G112国道4#穿越地形图 | resource dependent | 55d | 2019-02-20 | 2019-04-15 |
| MXMQJD0301PL001SV46 | 大广高速穿越纵断面图 | resource dependent | 55d | 2019-02-20 | 2019-04-15 |
| MXMQJD0301PL001SV47 | 大广高速穿越地形图 | resource dependent | 55d | 2019-02-20 | 2019-04-15 |
| MXMQJD0301PL001SV48 | 荣乌高速3#穿越纵断面图 | resource dependent | 55d | 2019-02-20 | 2019-04-15 |
| MXMQJD0301PL001SV49 | 荣乌高速3#穿越地形图 | resource dependent | 55d | 2019-02-20 | 2019-04-15 |
| MXMQJD0301PL001SV50 | G106国道穿越纵断面图 | resource dependent | 55d | 2019-02-20 | 2019-04-15 |
| MXMQJD0301PL001SV51 | G106国道穿越地形图 | resource dependent | 55d | 2019-02-20 | 2019-04-15 |
| MXMQJD0301PL001SV52 | 廊沧高速1#穿越纵断面图 | resource dependent | 55d | 2019-02-20 | 2019-04-15 |
| MXMQJD0301PL001SV53 | 廊沧高速1#穿越地形图 | resource dependent | 55d | 2019-02-20 | 2019-04-15 |
| MXMQJD0301PL001SV54 | S272省道穿越纵断面图 | resource dependent | 55d | 2019-02-20 | 2019-04-15 |
| MXMQJD0301PL001SV55 | S272省道穿越地形图 | resource dependent | 55d | 2019-02-20 | 2019-04-15 |
| MXMQJD0301PL001SV56 | 津霸公路穿越地形图 | resource dependent | 55d | 2019-02-20 | 2019-04-15 |
| MXMQJD0301PL001SV57 | 津霸公路穿越纵断面图 | resource dependent | 55d | 2019-02-20 | 2019-04-15 |

| ID | Activity | Type | Duration | Start | Finish |
| --- | --- | --- | --- | --- | --- |
| MXMQJD0301PL001SV58 | S310梁台路穿越地形图 | resource dependent | 55d | 2019-02-20 | 2019-04-15 |
| MXMQJD0301PL001SV59 | S310梁台路穿越纵断面图 | resource dependent | 55d | 2019-02-20 | 2019-04-15 |
| MXMQJD0301PL001SV60 | 新津莱公路穿越地形图 | resource dependent | 55d | 2019-02-20 | 2019-04-15 |
| MXMQJD0301PL001SV61 | 新津莱公路穿越纵断面图 | resource dependent | 55d | 2019-02-20 | 2019-04-15 |
| MXMQJD0301PL001SV62 | G2京沪高速公路穿越地形图 | resource dependent | 55d | 2019-02-20 | 2019-04-15 |
| MXMQJD0301PL001SV63 | G2京沪高速公路穿越纵断面图 | resource dependent | 55d | 2019-02-20 | 2019-04-15 |
| MXMQJD0301PL001SV64 | 静文公路穿越地形图 | resource dependent | 55d | 2019-02-20 | 2019-04-15 |
| MXMQJD0301PL001SV65 | 静文公路穿越纵断面图 | resource dependent | 55d | 2019-02-20 | 2019-04-15 |
| MXMQJD0301PL001SV66 | 子牙快速路地形图 | resource dependent | 55d | 2019-02-20 | 2019-04-15 |
| MXMQJD0301PL001SV67 | 子牙快速路纵断面图 | resource dependent | 55d | 2019-02-20 | 2019-04-15 |
| MXMQJD0301PL001SV68 | G104京福公路1#穿越地形图 | resource dependent | 55d | 2019-02-20 | 2019-04-15 |
| MXMQJD0301PL001SV69 | G104京福公路1#穿越纵断面图 | resource dependent | 55d | 2019-02-20 | 2019-04-15 |
| MXMQJD0301PL001SV70 | S313陈大公路穿越地形图 | resource dependent | 55d | 2019-02-20 | 2019-04-15 |
| MXMQJD0301PL001SV71 | S313陈大公路穿越纵断面图 | resource dependent | 55d | 2019-02-20 | 2019-04-15 |
| MXMQJD0301PL001SV72 | G104京福公路2#穿越地形图 | resource dependent | 55d | 2019-02-20 | 2019-04-15 |
| MXMQJD0301PL001SV73 | G104京福公路2#穿越地形图 | resource dependent | 55d | 2019-02-20 | 2019-04-15 |
| MXMQJD0301PL001SV74 | S60滨石公路1#穿越纵断面图 | resource dependent | 55d | 2019-02-20 | 2019-04-15 |
| MXMQJD0301PL001SV75 | S60滨石公路1#穿越地形图 | resource dependent | 55d | 2019-02-20 | 2019-04-15 |
| MXMQJD0301PL001SV76 | G104京福公路3#穿越纵断面图 | resource dependent | 55d | 2019-02-20 | 2019-04-15 |
| MXMQJD0301PL001SV77 | G104京福公路3#穿越地形图 | resource dependent | 55d | 2019-02-20 | 2019-04-15 |
| MXMQJD0301PL001SV78 | G105京福公路穿越纵断面图 | resource dependent | 55d | 2019-02-20 | 2019-04-15 |
| MXMQJD0301PL001SV79 | G105京福公路穿越地形图 | resource dependent | 55d | 2019-02-20 | 2019-04-15 |
| MXMQJD0301PL001SV80 | S6津沧高速穿越纵断面图 | resource dependent | 55d | 2019-02-20 | 2019-04-15 |
| MXMQJD0301PL001SV81 | S6津沧高速穿越地形图 | resource dependent | 55d | 2019-02-20 | 2019-04-15 |
| MXMQJD0301PL001SV82 | 静陈路穿越纵断面图 | resource dependent | 55d | 2019-02-20 | 2019-04-15 |
| MXMQJD0301PL001SV83 | 静陈路穿越地形图 | resource dependent | 55d | 2019-02-20 | 2019-04-15 |
| MXMQJD0301PL001SV84 | S60滨石公路2#穿越纵断面图 | resource dependent | 55d | 2019-02-20 | 2019-04-15 |
| MXMQJD0301PL001SV85 | S60滨石公路2#穿越地形图 | resource dependent | 55d | 2019-02-20 | 2019-04-15 |
| MXMQJD0301PL001SV86 | S60滨石公路3#穿越纵断面图 | resource dependent | 55d | 2019-02-20 | 2019-04-15 |
| MXMQJD0301PL001SV87 | S60滨石公路3#穿越地形图 | resource dependent | 55d | 2019-02-20 | 2019-04-15 |
| MXMQJD0301PL001SV88 | 静王路1#穿越纵断面图 | resource dependent | 55d | 2019-02-20 | 2019-04-15 |
| MXMQJD0301PL001SV89 | 静王路1#穿越地形图 | resource dependent | 55d | 2019-02-20 | 2019-04-15 |
| MXMQJD0301PL001SV90 | 静王路2#穿越地形图 | resource dependent | 55d | 2019-02-20 | 2019-04-15 |
| MXMQJD0301PL001SV91 | 静王路2#穿越纵断面图 | resource dependent | 55d | 2019-02-20 | 2019-04-15 |
| MXMQJD0301PL001SV92 | G205国道穿越地形图 | resource dependent | 55d | 2019-02-20 | 2019-04-15 |
| MXMQJD0301PL001SV93 | G205国道穿越纵断面图 | resource dependent | 55d | 2019-02-20 | 2019-04-15 |
| MXMQJD0301PL001SV94 | G205津津淄公路穿越地形图 | resource dependent | 55d | 2019-02-20 | 2019-04-15 |
| MXMQJD0301PL001SV95 | G205津津淄公路穿越纵断面图 | resource dependent | 55d | 2019-02-20 | 2019-04-15 |
| MXMQJD0301PL001SV96 | S233省道穿越地形图 | resource dependent | 55d | 2019-02-20 | 2019-04-15 |
| MXMQJD0301PL001SV97 | S233省道穿越纵断面图 | resource dependent | 55d | 2019-02-20 | 2019-04-15 |
| MXMQJD0301PL001SV98 | 荣乌高速4#穿越地形图 | resource dependent | 55d | 2019-02-20 | 2019-04-15 |
| MXMQJD0301PL001SV99 | 荣乌高速4#穿越纵断面图 | resource dependent | 55d | 2019-02-20 | 2019-04-15 |
| MXMQJD0301PL001SV100 | 荣乌高速5#穿越地形图 | resource dependent | 55d | 2019-02-20 | 2019-04-15 |
| MXMQJD0301PL001SV101 | 荣乌高速5#穿越纵断面图 | resource dependent | 55d | 2019-02-20 | 2019-04-15 |
| MXMQJD0301PL001SV102 | S315港中公路穿越地形图 | resource dependent | 55d | 2019-02-20 | 2019-04-15 |
| MXMQJD0301PL001SV103 | S315港中公路穿越纵断面图 | resource dependent | 55d | 2019-02-20 | 2019-04-15 |
| MXMQJD0301PL001SV104 | G205国道穿越地形图 | resource dependent | 55d | 2019-02-20 | 2019-04-15 |
| MXMQJD0301PL001SV105 | G205国道穿越纵断面图 | resource dependent | 55d | 2019-02-20 | 2019-04-15 |
| MXMQJD0301PL001SV106 | S384省道穿越地形图 | resource dependent | 55d | 2019-02-20 | 2019-04-15 |
| MXMQJD0301PL001SV107 | S384省道穿越纵断面图 | resource dependent | 55d | 2019-02-20 | 2019-04-15 |
| MXMQJD0301PL001SV108 | 黄骅市线路段地下管线探测技术设计书 | resource dependent | 55d | 2019-02-20 | 2019-04-15 |
| MXMQJD0301PL001SV109 | 黄骅市线路段地下管线探测报告书 | resource dependent | 55d | 2019-02-20 | 2019-04-15 |
| MXMQJD0301PL001SV110 | 黄骅市线路段管线数据成果报告 | resource dependent | 55d | 2019-02-20 | 2019-04-15 |
